# GradedUnitProject

Schedule from MS Project, 2015-01-05 to 2015-06-08.
Edinburgh College

## Calendars

- Liams Calendar: Mon-Wed 09:00-12:00, 13:00-18:00; Thu-Fri 08:00-12:00, 13:00-17:00; Sat-Sun 10:00-18:30.

## Resources

| Resource |
| --- |
| Liam - XNA |
| Liam - Microsoft Office |
| Liam - Adobe CS |
| Moodle/Share Drive |

## Schedule

| ID | WBS | Task | Type | Duration | Start | Finish | Predecessors | Total slack | Free slack | Constraint | Resources | Work |
| --- | --- | --- | --- | --- | --- | --- | --- | --- | --- | --- | --- | --- |
| 2 | 1 | **Planning** |  | 43.81d | 2015-01-05 | 2015-02-16 |  |  |  |  |  | 344h |
| 3 | 1.1 | project plan |  | 5d | 2015-01-05 | 2015-01-09 |  | 0.75d | 0d | start no earlier than 2015-01-05 | Liam - Microsoft Office | 40h |
| 4 | 1.2 | **Investigation** |  | 16.38d | 2015-01-10 | 2015-01-25 | 3 | 0.38d |  |  |  | 128h |
| 5 | 1.2.1 | Resources |  | 3d | 2015-01-10 | 2015-01-12 |  | 0.75d | 0d |  | Liam - Microsoft Office | 24h |
| 6 | 1.2.2 | Purpose and Scope |  | 4d | 2015-01-12 | 2015-01-16 | 5 | 0.75d | 0d |  | Liam - Microsoft Office | 32h |
| 7 | 1.2.3 | Function and Non functional Req |  | 5d | 2015-01-16 | 2015-01-21 | 6 | 0.75d | 0d |  | Liam - Microsoft Office | 40h |
| 8 | 1.2.4 | Timescales and Risks |  | 4d | 2015-01-21 | 2015-01-25 | 7 | 0.75d | 0d |  | Liam - Microsoft Office | 32h |
| 9 | 1.2.5 | Investigation Done | milestone, manual | 0d | 2015-01-25 | 2015-01-25 |  |  |  |  | Liam - Microsoft Office |  |
| 10 | 1.3 | **Design** |  | 22.75d | 2015-01-25 | 2015-02-16 | 8 | 0d |  |  |  | 176h |
| 11 | 1.3.1 | Pitch |  | 1d | 2015-01-25 | 2015-01-26 |  | 0.75d | 0d | finish no earlier than 2015-01-19 | Liam - Microsoft Office | 8h |
| 12 | 1.3.2 | USP |  | 2d | 2015-01-26 | 2015-01-28 | 11 | 0.75d | 0d | start no earlier than 2015-01-20 | Liam - Microsoft Office | 16h |
| 13 | 1.3.3 | Key Features |  | 2d | 2015-01-28 | 2015-01-30 | 12 | 0.75d | 0d |  | Liam - Microsoft Office | 16h |
| 14 | 1.3.4 | Targe Audience |  | 2d | 2015-01-30 | 2015-02-01 | 13 | 0.75d | 0d |  | Liam - Microsoft Office | 16h |
| 15 | 1.3.5 | Platform |  | 2d | 2015-02-01 | 2015-02-03 | 14 | 0.75d | 0d |  | Liam - Microsoft Office | 16h |
| 16 | 1.3.6 | Genre and Hook |  | 2d | 2015-02-03 | 2015-02-05 | 15 | 0.75d | 0d |  | Liam - Microsoft Office | 16h |
| 17 | 1.3.7 | Gameplay Description |  | 3d | 2015-02-05 | 2015-02-08 | 16 | 0.75d | 0d |  | Liam - Microsoft Office | 24h |
| 18 | 1.3.8 | Art Style |  | 1d | 2015-02-08 | 2015-02-09 | 17 | 0.75d | 0d |  | Liam - Microsoft Office | 8h |
| 19 | 1.3.9 | Competitive Analysis |  | 3d | 2015-02-09 | 2015-02-12 | 18 | 0.75d | 0d |  | Liam - Microsoft Office | 24h |
| 20 | 1.3.10 | Media Catalogue |  | 4d | 2015-02-12 | 2015-02-16 | 19 | 0.75d |  |  | Liam - Microsoft Office | 32h |
| 21 | 1.3.11 | Planning Finished | milestone, manual | 0d | 2015-02-16 | 2015-02-16 |  |  |  |  | Liam - Microsoft Office |  |
| 22 | 2 | **Development** |  | 93.62d | 2015-02-16 | 2015-05-18 | 2 | 0d |  |  |  | 4512h |
| 23 | 2.1 | **Analysis** |  | 3d | 2015-02-17 | 2015-02-19 |  | 84d | 0d |  |  | 48h |
| 24 | 2.1.1 | Identifying key Requirements and impact on game |  | 3d | 2015-02-17 | 2015-02-19 |  | 84d |  |  | Liam - Microsoft Office | 24h |
| 25 | 2.1.2 | Identify strong areas of risk for success |  | 3d | 2015-02-17 | 2015-02-19 |  | 84d |  |  | Liam - Microsoft Office | 24h |

| ID | WBS | Task | Type | Duration | Start | Finish | Predecessors | Total slack | Free slack | Constraint | Resources | Work |
| --- | --- | --- | --- | --- | --- | --- | --- | --- | --- | --- | --- | --- |
| 26 | 2.2 | **Design** |  | 5.12d | 2015-02-20 | 2015-02-24 | 23 | 83.88d |  |  |  | 112h |
| 27 | 2.2.1 | Illustration of maps in game |  | 2d | 2015-02-20 | 2015-02-21 |  | 87d |  |  | Liam - Adobe CS; Liam - Microsoft Office | 32h |
| 28 | 2.2.2 | Annoted position of characters, events and sounds |  | 1d | 2015-02-20 | 2015-02-20 |  | 88d |  |  | Liam - Microsoft Office | 8h |
| 29 | 2.2.3 | Flow Chart of level flow |  | 2d | 2015-02-20 | 2015-02-21 |  | 87d |  |  | Liam - Microsoft Office | 16h |
| 30 | 2.2.4 | Sketchbook/concept art |  | 1d | 2015-02-20 | 2015-02-20 |  | 88d |  |  | Liam - Microsoft Office | 8h |
| 31 | 2.2.5 | Catalogue of Dialogue In game |  | 1d | 2015-02-20 | 2015-02-20 |  | 88d |  |  | Liam - Microsoft Office | 8h |
| 32 | 2.2.6 | Discussion of theme, components and goals of game that create immersive experience |  | 5d | 2015-02-20 | 2015-02-24 |  | 84d |  |  | Liam - Microsoft Office | 40h |
| 33 | 2.2.7 | Development Design and Analysis finished | milestone | 0d | 2015-02-24 | 2015-02-24 |  | 83.88d |  | finish no earlier than 2015-02-24 | Liam - Microsoft Office |  |
| 34 | 2.3 | **Implementation** |  | 93.62d | 2015-02-16 | 2015-05-18 |  | 0d |  |  |  | 4352h |
| 35 | 2.3.1 | **Main game** |  | 71.25d | 2015-02-17 | 2015-04-27 |  | 0d |  |  |  | 504h |
| 36 | 2.3.1.1 | non Colidable Tiles |  | 3d | 2015-02-17 | 2015-02-19 |  | 8d | 0d |  | Liam - XNA | 24h |
| 37 | 2.3.1.2 | Animating Tiles |  | 3d | 2015-02-20 | 2015-02-22 | 36 | 8d | 0d |  | Liam - XNA | 24h |
| 38 | 2.3.1.3 | Colidable Tiles |  | 7d | 2015-02-22 | 2015-03-01 | 37 | 8d | 0d |  | Liam - XNA | 56h |
| 39 | 2.3.1.4 | Moving Platforms |  | 5d | 2015-03-01 | 2015-03-06 | 38 | 8d | 0d |  | Liam - XNA | 40h |
| 40 | 2.3.1.5 | Player moving and jumping with tile collision |  | 3d | 2015-03-06 | 2015-03-09 | 39 | 8d | 0d |  | Liam - XNA | 24h |
| 41 | 2.3.1.6 | Player shooting with direction indicator |  | 7d | 2015-03-09 | 2015-03-16 | 40 | 8d | 0d |  | Liam - XNA | 56h |
| 42 | 2.3.1.7 | Power up feature |  | 5d | 2015-03-16 | 2015-03-21 | 41 | 8d | 0d |  | Liam - XNA | 40h |
| 43 | 2.3.1.8 | Screen warp feature |  | 9d | 2015-03-21 | 2015-03-30 | 42 | 8d | 0d |  | Liam - XNA | 72h |
| 44 | 2.3.1.9 | Game Modes |  | 7d | 2015-03-30 | 2015-04-06 | 43 | 8d | 0d |  | Liam - XNA | 56h |
| 45 | 2.3.1.10 | Final Product Art |  | 7d | 2015-04-06 | 2015-04-12 | 44 | 8d | 0d |  | Liam - Adobe CS | 56h |
| 46 | 2.3.1.11 | Polishing product game |  | 4d | 2015-04-13 | 2015-04-16 | 45 | 8d | 0d |  | Liam - XNA | 32h |
| 47 | 2.3.1.12 | Extra Features Game (extra time) |  | 3d | 2015-04-17 | 2015-04-19 | 46 | 8d |  |  | Liam - XNA | 24h |
| 48 | 2.3.1.13 | Game Code Finished | milestone, manual | 0d | 2015-04-27 | 2015-04-27 |  |  |  |  | Liam - XNA; Moodle/Share Drive |  |
| 49 | 2.3.2 | **Menu** |  | 21.38d | 2015-04-28 | 2015-05-18 | 35 | -0.25d | 0d |  |  | 168h |
| 50 | 2.3.2.1 | Menu State and menu link up |  | 3d | 2015-04-28 | 2015-04-30 |  | -0.25d | 0d |  | Liam - XNA | 24h |
| 51 | 2.3.2.2 | Main Menu layout |  | 3d | 2015-05-01 | 2015-05-03 | 50 | -0.25d | 0d |  | Liam - XNA | 24h |
| 52 | 2.3.2.3 | Options menu layout |  | 3d | 2015-05-03 | 2015-05-06 | 51 | -0.25d | 0d |  | Liam - XNA | 24h |
| 53 | 2.3.2.4 | game setup menu layout |  | 3d | 2015-05-06 | 2015-05-09 | 52 | -0.25d | 0d |  | Liam - XNA | 24h |
| 54 | 2.3.2.5 | Final Product art with animation |  | 4d | 2015-05-09 | 2015-05-13 | 53 | -0.25d | 0d |  | Liam - Adobe CS | 32h |
| 55 | 2.3.2.6 | Polishing Product Menu |  | 4d | 2015-05-13 | 2015-05-17 | 54 | -0.25d | 0d |  | Liam - XNA | 32h |
| 56 | 2.3.2.7 | Extra features Menu (extra time) |  | 1d | 2015-05-17 | 2015-05-18 | 55 | -0.25d | 0d |  | Liam - XNA | 8h |
| 57 | 2.3.2.8 | Menu Finished | milestone, manual | 0d | 2015-05-18 | 2015-05-18 |  |  |  |  | Moodle/Share Drive |  |

| ID | WBS | Task | Type | Duration | Start | Finish | Predecessors | Total slack | Constraint | Resources | Work |
| --- | --- | --- | --- | --- | --- | --- | --- | --- | --- | --- | --- |
| 58 | 2.3.3 | **Docmentation** |  | 92d | 2015-02-16 | 2015-05-17 |  |  |  |  | 3680h |
| 59 | 2.3.3.1 | Daily Log |  | 92d | 2015-02-16 | 2015-05-17 |  | 23d | start no earlier than 2015-02-16 | Liam - Microsoft Office | 736h |
| 60 | 2.3.3.2 | test strategy and plan |  | 92d | 2015-02-16 | 2015-05-17 |  | 23d | start no earlier than 2015-02-16 | Liam - Microsoft Office | 736h |
| 61 | 2.3.3.3 | Test log Menu |  | 92d | 2015-02-16 | 2015-05-17 |  | 23d | start no earlier than 2015-02-16 | Liam - Microsoft Office | 736h |
| 62 | 2.3.3.4 | Test log Main Game |  | 92d | 2015-02-16 | 2015-05-17 |  | 23d | start no earlier than 2015-02-16 | Liam - Microsoft Office; Liam - XNA | 1472h |
| 63 | 2.3.3.5 | Documentation Finished | milestone, manual | 0d | 2015-05-17 | 2015-05-17 |  |  |  | Moodle/Share Drive |  |
| 64 | 3 | **evaluation** |  | 22d | 2015-05-18 | 2015-06-08 | 22 | 0d |  |  | 176h |
| 65 | 3.1 | **Report** |  | 22d | 2015-05-18 | 2015-06-08 |  | 0d |  |  | 176h |
| 66 | 3.1.1 | **Strategy reflection** |  | 11d | 2015-05-18 | 2015-05-29 |  |  |  |  | 88h |
| 67 | 3.1.1.1 | Reflection of Analysis |  | 2d | 2015-05-18 | 2015-05-20 |  | 0d |  | Liam - Microsoft Office | 16h |
| 68 | 3.1.1.2 | Reflection of Project plan |  | 4d | 2015-05-20 | 2015-05-24 | 67 | 0d |  | Liam - Microsoft Office | 32h |
| 69 | 3.1.1.3 | Reflection of design, implementation and testing |  | 5d | 2015-05-24 | 2015-05-29 | 68 | 0d |  | Liam - Microsoft Office | 40h |
| 70 | 3.1.2 | **Personal Reflection** |  | 11d | 2015-05-29 | 2015-06-08 | 66 | 0d |  |  | 88h |
| 71 | 3.1.2.1 | Handling of events |  | 3d | 2015-05-29 | 2015-06-01 |  | 0d | start no earlier than 2015-05-29 | Liam - Microsoft Office | 24h |
| 72 | 3.1.2.2 | evaluation of project as a whole |  | 3d | 2015-06-01 | 2015-06-04 | 71 | 0d |  | Liam - Microsoft Office | 24h |
| 73 | 3.1.2.3 | recommendations for sequel/feture |  | 3d | 2015-06-04 | 2015-06-07 | 72 | 0d |  | Liam - Microsoft Office | 24h |
| 74 | 3.1.2.4 | how close was project to the origonal concept |  | 2d | 2015-06-07 | 2015-06-08 | 73 | 0d |  | Liam - Microsoft Office | 16h |
| 75 | 3.1.2.5 | Evaluation Done | milestone, manual | 0d | 2015-06-08 | 2015-06-08 |  |  |  | Moodle/Share Drive |  |
